# Mavs_M5_Gantt_v1.4

Schedule from MS Project, 2019-07-08 to 2019-08-10, costs in $, A marks actual dates.

## Calendars

- Standard: Mon-Fri 08:00-12:00, 13:00-17:00; Sat-Sun off.

## Resources

| Resource | Rate |
| --- | --- |
| John Manzo | 15 |
| Cj Kozeny | 15 |
| Joe Cremeens | 15 |
| Shafiq Jahish | 15 |
| Erik Eiler | 15 |

## Schedule

| ID | WBS | Task | Type | Duration | Start | Finish | Predecessors | Complete | Remaining | Actual finish | Baseline start | Baseline finish | Baseline duration | Resources | Work | Actual work | Cost | Baseline cost | Actual cost |
| --- | --- | --- | --- | --- | --- | --- | --- | --- | --- | --- | --- | --- | --- | --- | --- | --- | --- | --- | --- |
| 1 | 1 | **Martin Cleaners Database Management System** |  | 26d | 2019-07-08 08:00 A | 2019-08-10 17:00 |  | 15% | 21.98d |  | 2019-07-08 08:00 | 2019-08-10 17:00 | 26d |  | 409h | 30.75h | 6,135 | 2,880 | 461.25 |
| 2 | 1.1 | **Milestone 5** |  | 6d | 2019-07-08 08:00 A | 2019-07-13 17:00 |  | 100% |  | 2019-07-12 12:00 | 2019-07-08 08:00 | 2019-07-13 17:00 | 6d |  | 30.75h | 30.75h | 461.25 | 630 | 461.25 |
| 3 | 1.1.1 | Roles and Responsibilities Matrix | manual | 0.75h | 2019-07-08 08:00 A | 2019-07-08 08:45 A |  | 100% |  |  | 2019-07-08 08:00 | 2019-07-08 10:00 | 0.25d | Shafiq Jahish | 0.75h | 0.75h | 11.25 | 30 | 11.25 |
| 4 | 1.1.2 | Client Document | manual | 0.25d | 2019-07-09 08:00 A | 2019-07-09 10:00 A | 3 | 100% |  |  | 2019-07-09 08:00 | 2019-07-09 12:00 | 0.5d | Joe Cremeens | 2h | 2h | 30 | 60 | 30 |
| 5 | 1.1.3 | Project Management Chart | manual | 0.75d | 2019-07-10 08:00 A | 2019-07-10 15:00 A | 3 | 100% |  |  | 2019-07-10 08:00 | 2019-07-10 15:00 | 0.75d | Cj Kozeny | 6h | 6h | 90 | 90 | 90 |
| 6 | 1.1.4 | Entity Relationship Diagram | manual | 0.75d | 2019-07-09 08:00 A | 2019-07-09 15:00 A | 3 | 100% |  |  | 2019-07-09 08:00 | 2019-07-09 15:00 | 0.75d | John Manzo | 6h | 6h | 90 | 90 | 90 |
| 7 | 1.1.5 | Full Relational Database Design | manual | 1d | 2019-07-10 08:00 A | 2019-07-10 17:00 A | 3, 6 | 100% |  |  | 2019-07-11 08:00 | 2019-07-12 17:00 | 2d | Cj Kozeny | 8h | 8h | 120 | 240 | 120 |
| 8 | 1.1.6 | **Appendix A** |  | 1d | 2019-07-12 08:00 A | 2019-07-12 17:00 |  | 100% |  | 2019-07-12 12:00 | 2019-07-12 08:00 | 2019-07-12 17:00 | 1d |  | 8h | 8h | 120 | 120 | 120 |
| 9 | 1.1.6.1 | Meeting Communications | manual | 0.5d | 2019-07-12 08:00 A | 2019-07-12 12:00 A | 3 | 100% |  |  | 2019-07-12 08:00 | 2019-07-12 12:00 | 0.5d | Erik Eiler | 4h | 4h | 60 | 60 | 60 |
| 10 | 1.1.6.2 | Control Documents | manual | 0.5d | 2019-07-12 08:00 A | 2019-07-12 12:00 A | 3 | 100% |  |  | 2019-07-12 08:00 | 2019-07-12 12:00 | 0.5d | Erik Eiler | 4h | 4h | 60 | 60 | 60 |
| 12 | 1.2 | **Milestone 6** |  | 6d | 2019-07-15 08:00 | 2019-07-20 17:00 | 2 |  |  |  | 2019-07-15 08:00 | 2019-07-20 17:00 | 6d |  | 34.75h |  | 521.25 | 600 |  |
| 13 | 1.2.1 | Roles and Responsibilities Matrix | manual | 0.75h | 2019-07-15 08:00 | 2019-07-15 08:45 |  |  |  |  | 2019-07-15 08:00 | 2019-07-15 10:00 | 0.25d | Erik Eiler | 0.75h |  | 11.25 | 30 |  |
| 14 | 1.2.2 | Client Document | manual | 0.5d | 2019-07-16 08:00 | 2019-07-16 12:00 | 13 |  |  |  | 2019-07-16 08:00 | 2019-07-16 12:00 | 0.5d | Joe Cremeens | 4h |  | 60 | 60 |  |
| 15 | 1.2.3 | Updated Project Management Chart | manual | 0.5d | 2019-07-16 08:00 | 2019-07-16 12:00 | 13 |  |  |  | 2019-07-16 08:00 | 2019-07-16 12:00 | 0.5d | Cj Kozeny | 4h |  | 60 | 60 |  |
| 16 | 1.2.4 | **Computer Architecture Design** |  | 0.25d | 2019-07-18 08:00 | 2019-07-18 10:00 |  |  |  |  | 2019-07-18 08:00 | 2019-07-18 10:00 | 0.25d |  | 2h |  | 30 | 90 |  |
| 17 | 1.2.4.1 | Actual Hardware | manual | 0.25d | 2019-07-18 08:00 | 2019-07-18 10:00 |  |  |  |  | 2019-07-18 08:00 | 2019-07-18 17:00 | 0d |  |  |  |  |  |  |
| 18 | 1.2.4.2 | RFP | manual | 0.25d | 2019-07-18 08:00 | 2019-07-18 10:00 | 13 |  |  |  | 2019-07-18 08:00 | 2019-07-18 10:00 | 0.25d | John Manzo | 2h |  | 30 | 30 |  |
| 19 | 1.2.5 | Comprehensive Systems Controls Plan | manual | 1d | 2019-07-17 08:00 | 2019-07-17 17:00 | 13 |  |  |  | 2019-07-17 08:00 | 2019-07-17 17:00 | 1d | Joe Cremeens | 8h |  | 120 | 120 |  |
| 20 | 1.2.6 | Input/Output and Interface Design | manual | 1d | 2019-07-19 08:00 | 2019-07-19 17:00 | 13 |  |  |  | 2019-07-19 08:00 | 2019-07-19 17:00 | 1d | Cj Kozeny | 8h |  | 120 | 120 |  |
| 21 | 1.2.7 | **Appendix A** |  | 1d | 2019-07-19 08:00 | 2019-07-19 17:00 |  |  |  |  | 2019-07-19 08:00 | 2019-07-19 17:00 | 1d |  | 8h |  | 120 | 120 |  |
| 22 | 1.2.7.1 | Meeting Communications | manual | 0.5d | 2019-07-19 08:00 | 2019-07-19 12:00 | 13 |  |  |  | 2019-07-19 08:00 | 2019-07-19 12:00 | 0.5d | Erik Eiler | 4h |  | 60 | 60 |  |
| 23 | 1.2.7.2 | Control Documents | manual | 0.5d | 2019-07-19 08:00 | 2019-07-19 12:00 | 13 |  |  |  | 2019-07-19 08:00 | 2019-07-19 12:00 | 0.5d | Erik Eiler | 4h |  | 60 | 60 |  |
| 25 | 1.3 | **Milestone 7** |  | 6d | 2019-07-22 08:00 | 2019-07-27 17:00 | 12, 2 |  |  |  | 2019-07-22 08:00 | 2019-07-27 17:00 | 6d |  | 34.75h |  | 521.25 | 540 |  |
| 26 | 1.3.1 | Roles and Responsibilities Matrix | manual | 0.75h | 2019-07-22 08:00 | 2019-07-22 08:45 |  |  |  |  | 2019-07-22 08:00 | 2019-07-22 10:00 | 0.25d | John Manzo | 0.75h |  | 11.25 | 30 |  |
| 27 | 1.3.2 | Client Document | manual | 0.5d | 2019-07-23 08:00 | 2019-07-23 12:00 | 26 |  |  |  | 2019-07-23 08:00 | 2019-07-23 12:00 | 0.5d | Joe Cremeens | 4h |  | 60 | 60 |  |
| 28 | 1.3.3 | Updated Project Management Chart | manual | 0.5d | 2019-07-24 08:00 | 2019-07-24 12:00 | 26 |  |  |  | 2019-07-24 08:00 | 2019-07-24 12:00 | 0.5d | Cj Kozeny | 4h |  | 60 | 60 |  |
| 29 | 1.3.4 | Commercial Software Component | manual | 0.5d | 2019-07-24 08:00 | 2019-07-24 12:00 | 26 |  |  |  | 2019-07-24 08:00 | 2019-07-24 12:00 | 0.5d | John Manzo | 4h |  | 60 | 60 |  |

| ID | WBS | Task | Type | Duration | Start | Finish | Predecessors | Baseline start | Baseline finish | Baseline duration | Resources | Work | Cost | Baseline cost |
| --- | --- | --- | --- | --- | --- | --- | --- | --- | --- | --- | --- | --- | --- | --- |
| 30 | 1.3.5 | **Proprietary Software Component** |  | 1d | 2019-07-25 08:00 | 2019-07-25 17:00 |  | 2019-07-25 08:00 | 2019-07-25 17:00 | 1d |  | 14h | 210 | 210 |
| 31 | 1.3.5.1 | Members, Tasks & Approach | manual | 0.5d | 2019-07-25 08:00 | 2019-07-25 12:00 | 26 | 2019-07-25 08:00 | 2019-07-25 12:00 | 0.5d | Cj Kozeny | 4h | 60 | 60 |
| 32 | 1.3.5.2 | Structure Chart | manual | 0.25d | 2019-07-25 08:00 | 2019-07-25 10:00 | 26 | 2019-07-25 08:00 | 2019-07-25 10:00 | 0.25d | Shafiq Jahish | 2h | 30 | 30 |
| 33 | 1.3.5.3 | 4 Run Sheets | manual | 0.5d | 2019-07-25 08:00 | 2019-07-25 12:00 | 26 | 2019-07-25 08:00 | 2019-07-25 12:00 | 0.5d | Shafiq Jahish | 4h | 60 | 60 |
| 34 | 1.3.5.4 | CRUD Table | manual | 0.5d | 2019-07-25 08:00 | 2019-07-25 12:00 | 26 | 2019-07-25 08:00 | 2019-07-25 12:00 | 0.5d | Erik Eiler | 4h | 60 | 60 |
| 35 | 1.3.6 | **Appendix A** |  | 1d | 2019-07-26 08:00 | 2019-07-26 17:00 |  | 2019-07-26 08:00 | 2019-07-26 17:00 | 1d |  | 8h | 120 | 120 |
| 36 | 1.3.6.1 | Meeting Communications | manual | 0.5d | 2019-07-26 08:00 | 2019-07-26 12:00 | 26 | 2019-07-26 08:00 | 2019-07-26 12:00 | 0.5d | Erik Eiler | 4h | 60 | 60 |
| 37 | 1.3.6.2 | Control Documents | manual | 0.5d | 2019-07-26 08:00 | 2019-07-26 12:00 | 26 | 2019-07-26 08:00 | 2019-07-26 12:00 | 0.5d | Erik Eiler | 4h | 60 | 60 |
| 39 | 1.4 | **Milestone 8** |  | 6d | 2019-07-29 08:00 | 2019-08-03 17:00 | 25, 12, 2 | 2019-07-29 08:00 | 2019-08-03 17:00 | 6d |  | 186.75h | 2,801.25 | 420 |
| 40 | 1.4.1 | Roles and Responsibilities Matrix | manual | 0.75h | 2019-07-29 08:00 | 2019-07-29 08:45 |  | 2019-07-29 08:00 | 2019-07-29 10:00 | 0.25d | Cj Kozeny | 0.75h | 11.25 | 30 |
| 41 | 1.4.2 | Client Document | manual | 0.5d | 2019-07-30 08:00 | 2019-07-30 12:00 | 40 | 2019-07-30 08:00 | 2019-07-30 12:00 | 0.5d | Joe Cremeens | 4h | 60 | 60 |
| 42 | 1.4.3 | Updated Project Management Chart | manual | 0.25d | 2019-07-31 08:00 | 2019-07-31 10:00 | 40 | 2019-07-31 08:00 | 2019-07-31 10:00 | 0.25d | Cj Kozeny | 2h | 30 | 30 |
| 43 | 1.4.4 | Software Testing Plan | manual | 0.5d | 2019-07-31 08:00 | 2019-07-31 12:00 | 40 | 2019-07-31 08:00 | 2019-07-31 12:00 | 0.5d | John Manzo | 4h | 60 | 60 |
| 44 | 1.4.5 | Implementation Plan | manual | 0.5d | 2019-08-01 08:00 | 2019-08-01 12:00 | 40 | 2019-08-01 08:00 | 2019-08-01 12:00 | 0.5d | Erik Eiler | 4h | 60 | 60 |
| 45 | 1.4.6 | Maintenance Plan | manual | 0.5d | 2019-08-01 08:00 | 2019-08-01 12:00 | 40 | 2019-08-01 08:00 | 2019-08-01 12:00 | 0.5d | Shafiq Jahish | 4h | 60 | 60 |
| 46 | 1.4.7 | Application Development | manual | 4d | 2019-07-30 08:00 | 2019-08-02 17:00 |  | 2019-07-30 08:00 | 2019-08-02 17:00 | 0d | Cj Kozeny; Erik Eiler; Joe Cremeens; John Manzo; Shafiq Jahish | 160h | 2,400 |  |
| 47 | 1.4.8 | **Appendix A** |  | 1d | 2019-08-02 08:00 | 2019-08-02 17:00 |  | 2019-08-02 08:00 | 2019-08-02 17:00 | 1d |  | 8h | 120 | 120 |
| 48 | 1.4.8.1 | Meeting Communications | manual | 0.5d | 2019-08-02 08:00 | 2019-08-02 12:00 | 40 | 2019-08-02 08:00 | 2019-08-02 12:00 | 0.5d | Erik Eiler | 4h | 60 | 60 |
| 49 | 1.4.8.2 | Control Documents | manual | 0.5d | 2019-08-02 08:00 | 2019-08-02 12:00 | 40 | 2019-08-02 08:00 | 2019-08-02 12:00 | 0.5d | Erik Eiler | 4h | 60 | 60 |
| 51 | 1.5 | **Final Project** |  | 6d | 2019-08-05 08:00 | 2019-08-10 17:00 | 39, 25, 12, 2 | 2019-08-05 08:00 | 2019-08-10 17:00 | 6d |  | 122h | 1,830 | 690 |
| 52 | 1.5.1 | Application Development | manual | 2d | 2019-08-06 08:00 | 2019-08-07 17:00 |  | 2019-08-06 08:00 | 2019-08-07 17:00 | 0d | Cj Kozeny; Erik Eiler; Joe Cremeens; John Manzo; Shafiq Jahish | 80h | 1,200 |  |
| 53 | 1.5.2 | **User & Operations Documentation** |  | 2d | 2019-08-08 08:00 | 2019-08-09 17:00 |  | 2019-08-05 08:00 | 2019-08-06 17:00 | 2d |  | 8h | 120 | 180 |
| 54 | 1.5.2.1 | Introduction & Objectives | manual | 0.25d | 2019-08-08 08:00 | 2019-08-08 10:00 |  | 2019-08-05 08:00 | 2019-08-05 10:00 | 0.25d | Cj Kozeny | 2h | 30 | 30 |
| 55 | 1.5.2.2 | The Information System | manual | 0.5d | 2019-08-08 08:00 | 2019-08-08 12:00 |  | 2019-08-05 08:00 | 2019-08-05 12:00 | 0.5d | Joe Cremeens | 4h | 60 | 60 |
| 56 | 1.5.2.3 | Appendices | manual | 0.25d | 2019-08-08 08:00 | 2019-08-08 10:00 |  | 2019-08-06 08:00 | 2019-08-06 15:00 | 0.75d | Erik Eiler | 2h | 30 | 90 |

| ID | WBS | Task | Type | Duration | Start | Finish | Baseline start | Baseline finish | Baseline duration | Resources | Work | Cost | Baseline cost |
| --- | --- | --- | --- | --- | --- | --- | --- | --- | --- | --- | --- | --- | --- |
| 57 | 1.5.3 | **Systems Documentation Wrap-Up** |  | 2d | 2019-08-08 08:00 | 2019-08-09 17:00 | 2019-08-07 08:00 | 2019-08-09 17:00 | 3d |  | 9h | 135 | 135 |
| 58 | 1.5.3.1 | Title Page | manual | 1h | 2019-08-08 08:00 | 2019-08-08 09:00 | 2019-08-07 08:00 | 2019-08-07 09:00 | 1h | Shafiq Jahish | 1h | 15 | 15 |
| 59 | 1.5.3.2 | Cross-Reference Index to Systems Analysis & Design Milestones | manual | 0.25d | 2019-08-08 08:00 | 2019-08-08 10:00 | 2019-08-08 08:00 | 2019-08-08 10:00 | 0.25d | Shafiq Jahish | 2h | 30 | 30 |
| 60 | 1.5.3.3 | Post-Project Cost/Benefit Analysis | manual | 0.5d | 2019-08-09 08:00 | 2019-08-09 12:00 | 2019-08-09 08:00 | 2019-08-09 12:00 | 0.5d | John Manzo | 4h | 60 | 60 |
| 61 | 1.5.3.4 | Post-Project Evaluation | manual | 0.25d | 2019-08-09 08:00 | 2019-08-09 10:00 | 2019-08-09 08:00 | 2019-08-09 10:00 | 0.25d | Joe Cremeens | 2h | 30 | 30 |
| 62 | 1.5.4 | **Final Project Presentation** |  | 3d | 2019-08-08 08:00 | 2019-08-10 17:00 | 2019-08-08 08:00 | 2019-08-10 17:00 | 3d |  | 25h | 375 | 375 |
| 63 | 1.5.4.1 | Create Presentation | manual | 0.5d | 2019-08-08 08:00 | 2019-08-08 12:00 | 2019-08-08 08:00 | 2019-08-08 12:00 | 0.5d | Joe Cremeens; Cj Kozeny; Erik Eiler; John Manzo; Shafiq Jahish | 20h | 300 | 300 |
| 64 | 1.5.4.2 | Group Evaluations | manual | 1h | 2019-08-10 08:00 | 2019-08-10 09:00 | 2019-08-10 08:00 | 2019-08-10 09:00 | 1h | Cj Kozeny; Erik Eiler; Joe Cremeens; John Manzo; Shafiq Jahish | 5h | 75 | 75 |
